| crew | duration | ef | endDate | es | id | lf | ls | name | phase | startDate | totalFloat | trade | packageCode | isMilestone |
| --- | --- | --- | --- | --- | --- | --- | --- | --- | --- | --- | --- | --- | --- | --- |
| computed withheld from client view 0 | input Kohler_Pune_Project_Schedule_V2.xlsx · Project Schedule · row 5 (Dur Days) 3 | 0 | 2026-07-09 | 0 | 1.1 | 0 | 0 | Site mobilisation & access setup | Mobilisation | 2026-07-07 | 0 | general |  |  |
| computed withheld from client view 0 | input Kohler_Pune_Project_Schedule_V2.xlsx · Project Schedule · row 6 (Dur Days) 2 | 0 | 2026-07-12 | 0 | 1.2 | 0 | 0 | Hoarding, barricading & signages | Mobilisation | 2026-07-11 | 0 | general |  |  |
| computed withheld from client view 0 | input Kohler_Pune_Project_Schedule_V2.xlsx · Project Schedule · row 7 (Dur Days) 2 | 0 | 2026-07-15 | 0 | 1.3 | 0 | 0 | HSE setup, permits & site induction | Mobilisation | 2026-07-14 | 0 | general |  |  |
| computed withheld from client view 0 | input Kohler_Pune_Project_Schedule_V2.xlsx · Project Schedule · row 10 (Dur Days) 2 | 0 | 2026-07-18 | 0 | 1.4 | 0 | 0 | Temporary power, water & lighting arrangement | Mobilisation | 2026-07-17 | 0 | general |  |  |
| computed withheld from client view 0 | input Kohler_Pune_Project_Schedule_V2.xlsx · Project Schedule · row 8 (Dur Days) 2 | 0 | 2026-07-15 | 0 | 2.1 | 0 | 0 | Existing condition / dilapidation survey | Survey & Make-Safe | 2026-07-14 | 0 | civil | A1 |  |
| computed withheld from client view 0 | input Kohler_Pune_Project_Schedule_V2.xlsx · Project Schedule · row 9 (Dur Days) 2 | 0 | 2026-07-15 | 0 | 2.2 | 0 | 0 | Existing services mapping & tagging | Survey & Make-Safe | 2026-07-14 | 0 | civil | A1 |  |
| computed withheld from client view 0 | input Kohler_Pune_Project_Schedule_V2.xlsx · Project Schedule · row 11 (Dur Days) 2 | 0 | 2026-07-19 | 0 | 2.3 | 0 | 0 | Hazardous material check & clearance | Survey & Make-Safe | 2026-07-18 | 0 | civil | A1 |  |
| computed withheld from client view 0 | input Kohler_Pune_Project_Schedule_V2.xlsx · Project Schedule · row 12 (Dur Days) 3 | 0 | 2026-07-23 | 0 | 2.4 | 0 | 0 | Disconnection & isolation of existing services | Survey & Make-Safe | 2026-07-21 | 0 | civil | A1 |  |
| computed withheld from client view 0 | input Kohler_Pune_Project_Schedule_V2.xlsx · Project Schedule · row 13 (Dur Days) 5 | 0 | 2026-07-21 | 0 | 3.1 | 0 | 0 | Dismantling of false ceiling & services below | Demolition & Dismantling | 2026-07-17 | 0 | civil | A1 |  |
| computed withheld from client view 0 | input Kohler_Pune_Project_Schedule_V2.xlsx · Project Schedule · row 14 (Dur Days) 5 | 0 | 2026-07-27 | 0 | 3.2 | 0 | 0 | Dismantling of partitions, glazing & doors | Demolition & Dismantling | 2026-07-23 | 0 | civil | A1 |  |
| computed withheld from client view 0 | input Kohler_Pune_Project_Schedule_V2.xlsx · Project Schedule · row 16 (Dur Days) 4 | 0 | 2026-08-03 | 0 | 3.3 | 0 | 0 | Removal of existing flooring & floor chipping | Demolition & Dismantling | 2026-07-31 | 0 | civil | A1 |  |
| computed withheld from client view 0 | input Kohler_Pune_Project_Schedule_V2.xlsx · Project Schedule · row 17 (Dur Days) 3 | 0 | 2026-07-19 | 0 | 3.4 | 0 | 0 | Dismantling of joinery, pantry & fixtures | Demolition & Dismantling | 2026-07-17 | 0 | civil | A1 |  |
| computed withheld from client view 0 | input Kohler_Pune_Project_Schedule_V2.xlsx · Project Schedule · row 18 (Dur Days) 4 | 0 | 2026-07-24 | 0 | 3.5 | 0 | 0 | Dismantling of existing services (cable, duct, pipe) | Demolition & Dismantling | 2026-07-21 | 0 | civil | A1 |  |
| computed withheld from client view 0 | input Kohler_Pune_Project_Schedule_V2.xlsx · Project Schedule · row 19 (Dur Days) 4 | 0 | 2026-07-29 | 0 | 3.6 | 0 | 0 | Civil breaking / hard demolition | Demolition & Dismantling | 2026-07-26 | 0 | civil | A1 |  |
| computed withheld from client view 0 | input Kohler_Pune_Project_Schedule_V2.xlsx · Project Schedule · row 15 (Dur Days) 6 | 0 | 2026-07-29 | 0 | 4.1 | 0 | 0 | Debris segregation & stacking | Debris Removal | 2026-07-24 | 0 | civil | A1 |  |
| computed withheld from client view 0 | input Kohler_Pune_Project_Schedule_V2.xlsx · Project Schedule · row 20 (Dur Days) 2 | 0 | 2026-07-29 | 0 | 4.2 | 0 | 0 | Debris removal & disposal | Debris Removal | 2026-07-28 | 0 | civil | A1 |  |
| computed withheld from client view 0 | input Kohler_Pune_Project_Schedule_V2.xlsx · Project Schedule · row 21 (Dur Days) 4 | 0 | 2026-08-03 | 0 | 5.1 | 0 | 0 | PCC & self-levelling screed preparation | Site Clearance & Handover | 2026-07-31 | 0 | general |  |  |
| computed withheld from client view 0 | input Kohler_Pune_Project_Schedule_V2.xlsx · Project Schedule · row 22 (Dur Days) 4 | 0 | 2026-08-08 | 0 | 5.2 | 0 | 0 | Site deep cleaning & dust clearance | Site Clearance & Handover | 2026-08-05 | 0 | cleaning |  |  |
| computed withheld from client view 0 | input Kohler_Pune_Project_Schedule_V2.xlsx · Project Schedule · row 23 (Dur Days) 1 | 0 | 2026-08-05 | 0 | 5.3 | 0 | 0 | Joint survey of cleared shell | Site Clearance & Handover | 2026-08-05 | 0 | general |  |  |
| computed withheld from client view 0 | input Kohler_Pune_Project_Schedule_V2.xlsx · Project Schedule · row 24 (Dur Days) 0 | 0 | 2026-08-05 | 0 | 5.4 | 0 | 0 | Cleared shell handover - Phase 1 completion | Milestone | 2026-08-05 | 0 | general |  | True |
| computed withheld from client view 0 | input Kohler_Pune_Project_Schedule_V2.xlsx · Project Schedule · row 26 (Dur Days) 3 | 0 | 2026-08-08 | 0 | 6.1 | 0 | 0 | Setting out & marking as per layout | Civil Works | 2026-08-06 | 0 | civil | A1 |  |
| computed withheld from client view 0 | input Kohler_Pune_Project_Schedule_V2.xlsx · Project Schedule · row 28 (Dur Days) 9 | 0 | 2026-08-17 | 0 | 6.2 | 0 | 0 | AAC block masonry work | Civil Works | 2026-08-09 | 0 | civil | A1 |  |
| computed withheld from client view 0 | input Kohler_Pune_Project_Schedule_V2.xlsx · Project Schedule · row 27 (Dur Days) 12 | 0 | 2026-08-19 | 0 | 6.3 | 0 | 0 | Gypsum partition framing & ply backing | Civil Works | 2026-08-08 | 0 | civil | A2 |  |
| computed withheld from client view 0 | input Kohler_Pune_Project_Schedule_V2.xlsx · Project Schedule · row 29 (Dur Days) 8 | 0 | 2026-08-20 | 0 | 6.4 | 0 | 0 | Self-levelling screed flooring | Civil Works | 2026-08-13 | 0 | flooring | B1 |  |
| computed withheld from client view 0 | input Kohler_Pune_Project_Schedule_V2.xlsx · Project Schedule · row 34 (Dur Days) 4 | 0 | 2026-08-24 | 0 | 6.5 | 0 | 0 | Waterproofing - wet areas | Civil Works | 2026-08-21 | 0 | civil | H1 |  |
| computed withheld from client view 0 | input Kohler_Pune_Project_Schedule_V2.xlsx · Project Schedule · row 30 (Dur Days) 28 | 0 | 2026-09-17 | 0 | 7.1 | 0 | 0 | HVAC works - Phase I (ducting & piping) | Services - Phase I | 2026-08-21 | 0 | hvac | D1 |  |
| computed withheld from client view 0 | input Kohler_Pune_Project_Schedule_V2.xlsx · Project Schedule · row 31 (Dur Days) 20 | 0 | 2026-09-09 | 0 | 7.2 | 0 | 0 | Electrical works - Phase I (conduiting & cabling) | Services - Phase I | 2026-08-21 | 0 | electrical | C1 |  |
| computed withheld from client view 0 | input Kohler_Pune_Project_Schedule_V2.xlsx · Project Schedule · row 32 (Dur Days) 14 | 0 | 2026-09-03 | 0 | 7.3 | 0 | 0 | FLSS works - Phase I (sprinkler piping & rough-in) | Services - Phase I | 2026-08-21 | 0 | sprinkler | G |  |
| computed withheld from client view 0 | input Kohler_Pune_Project_Schedule_V2.xlsx · Project Schedule · row 35 (Dur Days) 6 | 0 | 2026-08-26 | 0 | 7.4 | 0 | 0 | PHE works - Phase I (drainage & water lines) | Services - Phase I | 2026-08-21 | 0 | plumbing | F1 |  |
| computed withheld from client view 0 | input Kohler_Pune_Project_Schedule_V2.xlsx · Project Schedule · row 33 (Dur Days) 12 | 0 | 2026-09-16 | 0 | 7.5 | 0 | 0 | Passive networking - Phase I (cable laying) | Services - Phase I | 2026-09-05 | 0 | lv | E1 |  |
| computed withheld from client view 0 | input Kohler_Pune_Project_Schedule_V2.xlsx · Project Schedule · row 37 (Dur Days) 2 | 0 | 2026-09-11 | 0 | 7.7 | 0 | 0 | Services Phase-I inspection & sign-off | Services - Phase I | 2026-09-10 | 0 | general |  |  |
| computed withheld from client view 0 | input Kohler_Pune_Project_Schedule_V2.xlsx · Project Schedule · row 39 (Dur Days) 8 | 0 | 2026-09-01 | 0 | 8.1 | 0 | 0 | Gypsum board Partition & ceiling - framing | Ceiling Works | 2026-08-25 | 0 | ceiling | A2 |  |
| computed withheld from client view 0 | input Kohler_Pune_Project_Schedule_V2.xlsx · Project Schedule · row 40 (Dur Days) 9 | 0 | 2026-09-06 | 0 | 8.2 | 0 | 0 | Gypsum board ceiling - boarding & services integration | Ceiling Works | 2026-08-29 | 0 | ceiling | A2 |  |
| computed withheld from client view 0 | input Kohler_Pune_Project_Schedule_V2.xlsx · Project Schedule · row 41 (Dur Days) 2 | 0 | 2026-09-07 | 0 | 8.3 | 0 | 0 | Ceiling close-out inspection | Ceiling Works | 2026-09-06 | 0 | ceiling | A2 |  |
| computed withheld from client view 0 | input Kohler_Pune_Project_Schedule_V2.xlsx · Project Schedule · row 43 (Dur Days) 8 | 0 | 2026-09-25 | 0 | 11.2 | 0 | 0 | HVAC works - Phase II (indoor units & diffusers) | Services - Phase II | 2026-09-18 | 0 | hvac | D1 |  |
| computed withheld from client view 0 | input Kohler_Pune_Project_Schedule_V2.xlsx · Project Schedule · row 44 (Dur Days) 8 | 0 | 2026-09-24 | 0 | 11.5 | 0 | 0 | Passive networking - Phase II (termination & racks) | Services - Phase II | 2026-09-17 | 0 | lv | E1 |  |
| computed withheld from client view 0 | input Kohler_Pune_Project_Schedule_V2.xlsx · Project Schedule · row 55 (Dur Days) 6 | 0 | 2026-09-29 | 0 | 12.3 | 0 | 0 | Active networking & IT commissioning | IT, AV & Signage | 2026-09-24 | 0 | lv | E1 |  |
| computed withheld from client view 0 | input Kohler_Pune_Project_Schedule_V2.xlsx · Project Schedule · row 57 (Dur Days) 6 | 0 | 2026-10-01 | 0 | 14.1 | 0 | 0 | HVAC testing & balancing | Testing & Handover | 2026-09-26 | 0 | hvac | D1 |  |
| computed withheld from client view 0 | input Kohler_Pune_Project_Schedule_V2.xlsx · Project Schedule · row 38 (Dur Days) 8 | 0 | 2026-08-28 | 0 | 9.1 | 0 | 0 | Gypsum plaster & POP punning | Finishes | 2026-08-21 | 0 | finishing | A2 |  |
| computed withheld from client view 0 | input Kohler_Pune_Project_Schedule_V2.xlsx · Project Schedule · row 45 (Dur Days) 25 | 0 | 2026-10-19 | 0 | 9.2 | 0 | 0 | Flooring works - tile, marble, wooden & carpet | Finishes | 2026-09-25 | 0 | flooring | B1 |  |
| computed withheld from client view 0 | input Kohler_Pune_Project_Schedule_V2.xlsx · Project Schedule · row 49 (Dur Days) 18 | 0 | 2026-10-12 | 0 | 10.1 | 0 | 0 | Reception, display & water-body joinery | Joinery | 2026-09-25 | 0 | carpentry | A2 |  |
| computed withheld from client view 0 | input Kohler_Pune_Project_Schedule_V2.xlsx · Project Schedule · row 50 (Dur Days) 12 | 0 | 2026-10-06 | 0 | 10.2 | 0 | 0 | Cafeteria & pantry joinery | Joinery | 2026-09-25 | 0 | carpentry | H1 |  |
| computed withheld from client view 0 | input Kohler_Pune_Project_Schedule_V2.xlsx · Project Schedule · row 51 (Dur Days) 8 | 0 | 2026-10-02 | 0 | 11.3 | 0 | 0 | FLSS works - Phase II (heads, detectors & PA system) | Services - Phase II | 2026-09-25 | 0 | sprinkler | G |  |
| computed withheld from client view 0 | input Kohler_Pune_Project_Schedule_V2.xlsx · Project Schedule · row 52 (Dur Days) 5 | 0 | 2026-09-22 | 0 | 11.4 | 0 | 0 | PHE works - Phase II (sanitaryware & fixtures) | Services - Phase II | 2026-09-18 | 0 | plumbing | F1 |  |
| computed withheld from client view 0 | input Kohler_Pune_Project_Schedule_V2.xlsx · Project Schedule · row 60 (Dur Days) 11 | 0 | 2026-10-04 | 0 | 12.1 | 0 | 0 | AV system installation | IT, AV & Signage | 2026-09-24 | 0 | lv | E1 |  |
| computed withheld from client view 0 | input Kohler_Pune_Project_Schedule_V2.xlsx · Project Schedule · row 66 (Dur Days) 6 | 0 | 2026-10-15 | 0 | 14.4 | 0 | 0 | AV & IT integration testing | Testing & Handover | 2026-10-10 | 0 | lv | E1 |  |
| computed withheld from client view 0 | input Kohler_Pune_Project_Schedule_V2.xlsx · Project Schedule · row 46 (Dur Days) 10 | 0 | 2026-10-04 | 0 | 9.3 | 0 | 0 | Modular glass partitions & doors installation | Finishes | 2026-09-25 | 0 | glass | A3 |  |
| computed withheld from client view 0 | input Kohler_Pune_Project_Schedule_V2.xlsx · Project Schedule · row 59 (Dur Days) 6 | 0 | 2026-09-30 | 0 | 10.3 | 0 | 0 | Doors & ironmongery installation | Joinery | 2026-09-25 | 0 | carpentry | A3 |  |
| computed withheld from client view 0 | input Kohler_Pune_Project_Schedule_V2.xlsx · Project Schedule · row 61 (Dur Days) 5 | 0 | 2026-10-03 | 0 | 12.5 | 0 | 0 | Blinds installation | IT, AV & Signage | 2026-09-29 | 0 | finishing | A6 |  |
| computed withheld from client view 0 | input Kohler_Pune_Project_Schedule_V2.xlsx · Project Schedule · row 42 (Dur Days) 8 | 0 | 2026-09-15 | 0 | 9.4 | 0 | 0 | Painting works - primer & first coat | Finishes | 2026-09-08 | 0 | painting |  |  |
| computed withheld from client view 0 | input Kohler_Pune_Project_Schedule_V2.xlsx · Project Schedule · row 47 (Dur Days) 12 | 0 | 2026-10-16 | 0 | 11.1 | 0 | 0 | Electrical works - Phase II (fixtures, switches & light fixtures) | Services - Phase II | 2026-10-05 | 0 | electrical | C2 |  |
| computed withheld from client view 0 | input Kohler_Pune_Project_Schedule_V2.xlsx · Project Schedule · row 53 (Dur Days) 6 | 0 | 2026-09-29 | 0 | 12.2 | 0 | 0 | Access control & CCTV installation | IT, AV & Signage | 2026-09-24 | 0 | lv | E1 |  |
| computed withheld from client view 0 | input Kohler_Pune_Project_Schedule_V2.xlsx · Project Schedule · row 64 (Dur Days) 5 | 0 | 2026-10-09 | 0 | 14.2 | 0 | 0 | Electrical testing & commissioning | Testing & Handover | 2026-10-05 | 0 | electrical | C1 |  |
| computed withheld from client view 0 | input Kohler_Pune_Project_Schedule_V2.xlsx · Project Schedule · row 62 (Dur Days) 4 | 0 | 2026-10-02 | 0 | 14.3 | 0 | 0 | Fire & life-safety system testing | Testing & Handover | 2026-09-29 | 0 | sprinkler | G |  |
| computed withheld from client view 0 | input Kohler_Pune_Project_Schedule_V2.xlsx · Project Schedule · row 67 (Dur Days) 7 | 0 | 2026-10-16 | 0 | 14.6 | 0 | 0 | Integrated systems commissioning | Testing & Handover | 2026-10-10 | 0 | general |  |  |
| computed withheld from client view 0 | input Kohler_Pune_Project_Schedule_V2.xlsx · Project Schedule · row 70 (Dur Days) 4 | 0 | 2026-11-03 | 0 | 14.9 | 0 | 0 | Handover documentation & training | Testing & Handover | 2026-10-31 | 0 | general |  |  |
| computed withheld from client view 0 | input Kohler_Pune_Project_Schedule_V2.xlsx · Project Schedule · row 48 (Dur Days) 6 | 0 | 2026-10-12 | 0 | 9.5 | 0 | 0 | Graphics & films application | Finishes | 2026-10-07 | 0 | finishing | A5 |  |
| computed withheld from client view 0 | input Kohler_Pune_Project_Schedule_V2.xlsx · Project Schedule · row 54 (Dur Days) 4 | 0 | 2026-09-30 | 0 | 10.4 | 0 | 0 | Planters installation | Joinery | 2026-09-27 | 0 | carpentry | A7 |  |
| computed withheld from client view 0 | input Kohler_Pune_Project_Schedule_V2.xlsx · Project Schedule · row 56 (Dur Days) 5 | 0 | 2026-10-01 | 0 | 12.4 | 0 | 0 | Signage & wayfinding installation | IT, AV & Signage | 2026-09-27 | 0 | lv | A4 |  |
| computed withheld from client view 0 | input Kohler_Pune_Project_Schedule_V2.xlsx · Project Schedule · row 58 (Dur Days) 5 | 0 | 2026-09-28 | 0 | 9.6 | 0 | 0 | Painting works - final coat | Finishes | 2026-09-24 | 0 | painting |  |  |
| computed withheld from client view 0 | input Kohler_Pune_Project_Schedule_V2.xlsx · Project Schedule · row 63 (Dur Days) 8 | 0 | 2026-10-04 | 0 | 13.1 | 0 | 0 | Modular furniture installation | Furniture | 2026-09-27 | 0 | carpentry | B2 |  |
| computed withheld from client view 0 | input Kohler_Pune_Project_Schedule_V2.xlsx · Project Schedule · row 65 (Dur Days) 6 | 0 | 2026-10-15 | 0 | 13.2 | 0 | 0 | Loose furniture & chairs installation | Furniture | 2026-10-10 | 0 | carpentry | B3 |  |
| computed withheld from client view 0 | input Kohler_Pune_Project_Schedule_V2.xlsx · Project Schedule · row 36 (Dur Days) 22 | 0 | 2026-09-17 | 0 | TW.1 | 0 | 0 | Toilet works (cubicles, cladding, ceiling & sanitaryware) | Toilet Works | 2026-08-27 | 0 | plumbing | A8 |  |
| computed withheld from client view 0 | input Kohler_Pune_Project_Schedule_V2.xlsx · Project Schedule · row 68 (Dur Days) 11 | 0 | 2026-10-27 | 0 | 14.7 | 0 | 0 | Snagging & de-snagging | Testing & Handover | 2026-10-17 | 0 | general |  |  |
| computed withheld from client view 0 | input Kohler_Pune_Project_Schedule_V2.xlsx · Project Schedule · row 69 (Dur Days) 3 | 0 | 2026-10-30 | 0 | 14.8 | 0 | 0 | Final cleaning | Testing & Handover | 2026-10-28 | 0 | cleaning |  |  |
| computed withheld from client view 0 | input Kohler_Pune_Project_Schedule_V2.xlsx · Project Schedule · row 71 (Dur Days) 0 | 0 | 2026-11-03 | 0 | 14.10 | 0 | 0 | Project handover - Phase 2 completion | Milestone | 2026-11-03 | 0 | general |  | True |
