| crew | critical | duration | ef | endDate | es | id | lf | ls | name | packageCode | phase | plannedStartFromInput | startDate | totalFloat | trade | valueShare | deps |
| --- | --- | --- | --- | --- | --- | --- | --- | --- | --- | --- | --- | --- | --- | --- | --- | --- | --- |
| norm norms-v1:crewByTrade.general 4 | True | input SKF, Pune Schedule.xlsx · task row 1 (planned WORK DAYS) 6 | 6 | 2026-06-13 | 0 | t1 | 6 | 0 | Site Marking & Dilapidation Report | GSS | Site Prep | 2026-06-08 | 2026-06-08 | 0 | general | 0.3 |  |
| norm norms-v1:crewByTrade.electrical 10 |  | input SKF, Pune Schedule.xlsx · task row 2 (planned WORK DAYS) 2 | 4 | 2026-06-11 | 2 | t2 | 68 | 66 | Temporary Power | GSS | Site Prep | 2026-06-10 | 2026-06-10 | 64 | electrical | 0.2 | 2 t1 SS |
| norm norms-v1:crewByTrade.general 4 | True | input SKF, Pune Schedule.xlsx · task row 3 (planned WORK DAYS) 4 | 8 | 2026-06-15 | 4 | t3 | 8 | 4 | Furniture Marking | GSS | Site Prep | 2026-06-12 | 2026-06-12 | 0 | general | 0.1 | 4 t1 SS |
| norm norms-v1:crewByTrade.civil 8 | True | input SKF, Pune Schedule.xlsx · task row 4 (planned WORK DAYS) 22 | 35 | 2026-07-12 | 13 | t4 | 35 | 13 | Blockwork, AAC Blocks & Plastering | A1 | Civil Work | 2026-06-21 | 2026-06-21 | 0 | civil | 0.55 | 0 t1 FS, 5 t3 FS |
| norm norms-v1:crewByTrade.partition 10 |  | input SKF, Pune Schedule.xlsx · task row 11 (planned WORK DAYS) 18 | 33 | 2026-07-10 | 15 | t11 | 36 | 18 | 100mm Partition Framing | A2 | Partition & Paneling | 2026-06-23 | 2026-06-23 | 3 | partition | 0.2 | 2 t4 SS |
| norm norms-v1:crewByTrade.partition 10 |  | input SKF, Pune Schedule.xlsx · task row 12 (planned WORK DAYS) 10 | 34 | 2026-07-11 | 24 | t12 | 37 | 27 | Gypsum Panelling | A2 | Partition & Paneling | 2026-07-02 | 2026-07-02 | 3 | partition | 0.15 | 9 t11 SS |
| norm norms-v1:crewByTrade.partition 10 |  | input SKF, Pune Schedule.xlsx · task row 13 (planned WORK DAYS) 8 | 33 | 2026-07-10 | 25 | t13 | 56 | 48 | Gypsum Wall Punning | A2 | Partition & Paneling | 2026-07-03 | 2026-07-03 | 23 | partition | 0.08 | 1 t12 SS |
| norm norms-v1:crewByTrade.carpentry 8 |  | input SKF, Pune Schedule.xlsx · task row 14 (planned WORK DAYS) 12 | 37 | 2026-07-14 | 25 | t14 | 68 | 56 | Column Cladding (Ply/Gypsum) | A2 | Partition & Paneling | 2026-07-03 | 2026-07-03 | 31 | carpentry | 0.09 | 10 t11 SS |
| norm norms-v1:crewByTrade.glass 5 |  | input SKF, Pune Schedule.xlsx · task row 15 (planned WORK DAYS) 14 | 44 | 2026-07-21 | 30 | t15 | 56 | 42 | Glass Partition | A3 | Partition & Paneling | 2026-07-08 | 2026-07-08 | 12 | glass | 0.85 | 15 t11 SS |
| norm norms-v1:crewByTrade.electrical 10 |  | input SKF, Pune Schedule.xlsx · task row 20 (planned WORK DAYS) 21 | 45 | 2026-07-22 | 24 | t20 | 68 | 47 | GI Cable Trays, Trunking & MS Supports | C1 | Electrical & Networking | 2026-07-02 | 2026-07-02 | 23 | electrical | 0.2 | 9 t11 SS |
| norm norms-v1:crewByTrade.electrical 10 | True | input SKF, Pune Schedule.xlsx · task row 21 (planned WORK DAYS) 20 | 37 | 2026-07-14 | 17 | t21 | 37 | 17 | Raceway Trunking & Installation | C1 | Electrical & Networking | 2026-06-25 | 2026-06-25 | 0 | electrical | 0.2 | 4 t4 SS |
| norm norms-v1:crewByTrade.ceiling 8 |  | input SKF, Pune Schedule.xlsx · task row 16 (planned WORK DAYS) 8 | 36 | 2026-07-13 | 28 | t16 | 60 | 52 | Gypsum False Ceiling | A2 | False Ceiling | 2026-07-06 | 2026-07-06 | 24 | ceiling | 0.15 | 0 t11 SS, 11 t21 SS |
| norm norms-v1:crewByTrade.ceiling 8 |  | input SKF, Pune Schedule.xlsx · task row 17 (planned WORK DAYS) 6 | 40 | 2026-07-17 | 34 | t17 | 68 | 62 | Metal / Fire-rated Ceiling | A2 | False Ceiling | 2026-07-12 | 2026-07-12 | 28 | ceiling | 0.05 | 6 t16 SS |
| norm norms-v1:crewByTrade.ceiling 8 |  | input SKF, Pune Schedule.xlsx · task row 18 (planned WORK DAYS) 6 | 35 | 2026-07-12 | 29 | t18 | 68 | 62 | Designer Ceiling — Laminate Finish | A2 | False Ceiling | 2026-07-07 | 2026-07-07 | 33 | ceiling | 0.05 | 1 t16 SS |
| norm norms-v1:crewByTrade.ceiling 8 |  | input SKF, Pune Schedule.xlsx · task row 19 (planned WORK DAYS) 5 | 42 | 2026-07-19 | 37 | t19 | 68 | 63 | Acoustic Baffle Ceiling | A2 | False Ceiling | 2026-07-15 | 2026-07-15 | 26 | ceiling | 0.05 | 9 t16 SS |
| norm norms-v1:crewByTrade.electrical 10 | True | input SKF, Pune Schedule.xlsx · task row 22 (planned WORK DAYS) 21 | 52 | 2026-07-29 | 31 | t22 | 52 | 31 | GI Conduiting & Switch/Point Back-boxes | C1 | Electrical & Networking | 2026-07-09 | 2026-07-09 | 0 | electrical | 0.2 | 14 t21 SS |
| norm norms-v1:crewByTrade.electrical 10 | True | input SKF, Pune Schedule.xlsx · task row 23 (planned WORK DAYS) 21 | 59 | 2026-08-05 | 38 | t23 | 59 | 38 | Point Wiring, Circuits, Mains & DB's | C1 | Electrical & Networking | 2026-07-16 | 2026-07-16 | 0 | electrical | 0.25 | 7 t22 SS |
| norm norms-v1:crewByTrade.electrical 10 | True | input SKF, Pune Schedule.xlsx · task row 24 (planned WORK DAYS) 11 | 54 | 2026-07-31 | 43 | t24 | 54 | 43 | LT Panel Labeling | C1 | Electrical & Networking | 2026-07-21 | 2026-07-21 | 0 | electrical | 0.05 | 5 t23 SS |
| norm norms-v1:crewByTrade.electrical 10 | True | input SKF, Pune Schedule.xlsx · task row 25 (planned WORK DAYS) 3 | 55 | 2026-08-01 | 52 | t25 | 55 | 52 | Panel Installation — Testing & Commissioning | C1 | Electrical & Networking | 2026-07-30 | 2026-07-30 | 0 | electrical | 0.1 | 0 t23 SS, 1 t24 FF |
| norm norms-v1:crewByTrade.hvac 8 |  | input SKF, Pune Schedule.xlsx · task row 26 (planned WORK DAYS) 18 | 44 | 2026-07-21 | 26 | t26 | 49 | 31 | GI Sheet Ducting Fabrication & Installation | HVAC | HVAC | 2026-07-04 | 2026-07-04 | 5 | hvac | 0.3 | 11 t11 SS |
| norm norms-v1:crewByTrade.hvac 8 |  | input SKF, Pune Schedule.xlsx · task row 27 (planned WORK DAYS) 2 | 40 | 2026-07-17 | 38 | t27 | 45 | 43 | Duct Light Testing (Pre-insulation) | HVAC | HVAC | 2026-07-16 | 2026-07-16 | 5 | hvac | 0.02 | 12 t26 SS |
| norm norms-v1:crewByTrade.hvac 8 |  | input SKF, Pune Schedule.xlsx · task row 28 (planned WORK DAYS) 9 | 49 | 2026-07-26 | 40 | t28 | 54 | 45 | Thermal & Acoustic Insulation | HVAC | HVAC | 2026-07-18 | 2026-07-18 | 5 | hvac | 0.1 | 0 t27 FS |
| norm norms-v1:crewByTrade.hvac 8 |  | input SKF, Pune Schedule.xlsx · task row 29 (planned WORK DAYS) 9 | 52 | 2026-07-29 | 43 | t29 | 57 | 48 | Grilles, Diffusers, Fire Dampers & Actuators | HVAC | HVAC | 2026-07-21 | 2026-07-21 | 5 | hvac | 0.13 | 3 t28 SS |
| norm norms-v1:crewByTrade.hvac 8 |  | input SKF, Pune Schedule.xlsx · task row 30 (planned WORK DAYS) 4 | 44 | 2026-07-21 | 40 | t30 | 68 | 64 | Battery Room Ventilation | HVAC | HVAC | 2026-07-18 | 2026-07-18 | 24 | hvac | 0.05 | 14 t26 SS |
| norm norms-v1:crewByTrade.hvac 8 |  | input SKF, Pune Schedule.xlsx · task row 31 (planned WORK DAYS) 11 | 38 | 2026-07-15 | 27 | t31 | 43 | 32 | Refrigerant Piping & Cable Trays | HVAC | HVAC | 2026-07-05 | 2026-07-05 | 5 | hvac | 0.1 | 1 t26 SS |
| norm norms-v1:crewByTrade.hvac 8 |  | input SKF, Pune Schedule.xlsx · task row 32 (planned WORK DAYS) 7 | 50 | 2026-07-27 | 43 | t32 | 55 | 48 | Indoor Units Installation | HVAC | HVAC | 2026-07-21 | 2026-07-21 | 5 | hvac | 0.15 | 16 t31 SS |
| norm norms-v1:crewByTrade.hvac 8 |  | input SKF, Pune Schedule.xlsx · task row 33 (planned WORK DAYS) 5 | 43 | 2026-07-20 | 38 | t33 | 55 | 50 | VRV Requirements and ODUs | HVAC | HVAC | 2026-07-16 | 2026-07-16 | 12 | hvac | 0.1 | 11 t31 SS |
| norm norms-v1:crewByTrade.hvac 8 |  | input SKF, Pune Schedule.xlsx · task row 34 (planned WORK DAYS) 3 | 53 | 2026-07-30 | 50 | t34 | 58 | 55 | HVAC Testing & Commissioning | HVAC | HVAC | 2026-07-28 | 2026-07-28 | 5 | hvac | 0.05 | 0 t32 FS, 0 t33 FS, -2 t29 FS |
| norm norms-v1:crewByTrade.sprinkler 5 |  | input SKF, Pune Schedule.xlsx · task row 35 (planned WORK DAYS) 10 | 29 | 2026-07-06 | 19 | t35 | 36 | 26 | C-Class Sprinkler Piping (Grooved) | FSY | Sprinkler Work | 2026-06-27 | 2026-06-27 | 7 | sprinkler | 0.4 | 2 t21 SS |
| norm norms-v1:crewByTrade.sprinkler 5 |  | input SKF, Pune Schedule.xlsx · task row 36 (planned WORK DAYS) 10 | 61 | 2026-08-07 | 51 | t36 | 68 | 58 | Alarm Valve Assembly & Flow Switch | FSY | Sprinkler Work | 2026-07-29 | 2026-07-29 | 7 | sprinkler | 0.15 | 22 t35 FS |
| norm norms-v1:crewByTrade.sprinkler 5 |  | input SKF, Pune Schedule.xlsx · task row 37 (planned WORK DAYS) 7 | 31 | 2026-07-08 | 24 | t37 | 55 | 48 | Pendent/Upright Sprinklers & Flexible Drops | FSY | Sprinkler Work | 2026-07-02 | 2026-07-02 | 24 | sprinkler | 0.15 | 5 t35 SS |
| norm norms-v1:crewByTrade.sprinkler 5 |  | input SKF, Pune Schedule.xlsx · task row 38 (planned WORK DAYS) 3 | 43 | 2026-07-20 | 40 | t38 | 58 | 55 | Sprinkler Testing & Commissioning | FSY | Sprinkler Work | 2026-07-18 | 2026-07-18 | 15 | sprinkler | 0.05 | -11 t36 SS, 0 t37 FS |
| norm norms-v1:crewByTrade.lv 6 |  | input SKF, Pune Schedule.xlsx · task row 39 (planned WORK DAYS) 15 | 48 | 2026-07-25 | 33 | t39 | 63 | 48 | Red/Black Armored Cabling (FAS/PA/CCTV) | FSY | LV Systems | 2026-07-11 | 2026-07-11 | 15 | lv | 0.1 | 16 t21 SS |
| norm norms-v1:crewByTrade.lv 6 |  | input SKF, Pune Schedule.xlsx · task row 40 (planned WORK DAYS) 9 | 51 | 2026-07-28 | 42 | t40 | 68 | 59 | Detectors, Hooters & PAVA Rack Commissioning | FSY | LV Systems | 2026-07-20 | 2026-07-20 | 17 | lv | 0.05 | 9 t39 SS |
| norm norms-v1:crewByTrade.lv 6 |  | input SKF, Pune Schedule.xlsx · task row 41 (planned WORK DAYS) 9 | 49 | 2026-07-26 | 40 | t41 | 68 | 59 | EM Locks, Biometric Readers & CCTV | FSY | LV Systems | 2026-07-18 | 2026-07-18 | 19 | lv | 0.05 | 7 t39 SS |
| norm norms-v1:crewByTrade.lv 6 |  | input SKF, Pune Schedule.xlsx · task row 42 (planned WORK DAYS) 9 | 53 | 2026-07-30 | 44 | t42 | 68 | 59 | Emergency Exit Signage | FSY | LV Systems | 2026-07-22 | 2026-07-22 | 15 | lv | 0.02 | 11 t39 SS |
| norm norms-v1:crewByTrade.lv 6 |  | input SKF, Pune Schedule.xlsx · task row 43 (planned WORK DAYS) 7 | 51 | 2026-07-28 | 44 | t43 | 68 | 61 | Rodent Repellent System | FSY | LV Systems | 2026-07-22 | 2026-07-22 | 17 | lv | 0.01 | 11 t39 SS |
| norm norms-v1:crewByTrade.lv 6 |  | input SKF, Pune Schedule.xlsx · task row 44 (planned WORK DAYS) 7 | 51 | 2026-07-28 | 44 | t44 | 68 | 61 | Water Leak Detection System | FSY | LV Systems | 2026-07-22 | 2026-07-22 | 17 | lv | 0.02 | 11 t39 SS |
| norm norms-v1:crewByTrade.carpentry 8 |  | input SKF, Pune Schedule.xlsx · task row 45 (planned WORK DAYS) 20 | 48 | 2026-07-25 | 28 | t45 | 68 | 48 | Reception Table | A2 | Doors & Carpentry | 2026-07-06 | 2026-07-06 | 20 | carpentry | 0.05 | 4 t12 SS |
| norm norms-v1:crewByTrade.carpentry 8 |  | input SKF, Pune Schedule.xlsx · task row 46 (planned WORK DAYS) 10 | 43 | 2026-07-20 | 33 | t46 | 68 | 58 | Flush Doors | A2 | Doors & Carpentry | 2026-07-11 | 2026-07-11 | 25 | carpentry | 0.03 | 9 t12 SS |
| norm norms-v1:crewByTrade.glass 5 |  | input SKF, Pune Schedule.xlsx · task row 47 (planned WORK DAYS) 6 | 36 | 2026-07-13 | 30 | t47 | 48 | 42 | Glass Doors | A3 | Doors & Carpentry | 2026-07-08 | 2026-07-08 | 12 | glass | 0.1 | 0 t15 SS |
| norm norms-v1:crewByTrade.glass 5 |  | input SKF, Pune Schedule.xlsx · task row 48 (planned WORK DAYS) 5 | 54 | 2026-07-31 | 49 | t48 | 66 | 61 | Back Painted Glass | A3 | Doors & Carpentry | 2026-07-27 | 2026-07-27 | 12 | glass | 0.05 | 13 t47 FS |
| norm norms-v1:crewByTrade.plumbing 4 |  | input SKF, Pune Schedule.xlsx · task row 5 (planned WORK DAYS) 12 | 34 | 2026-07-11 | 22 | t5 | 36 | 24 | Plumbing Internal Piping | PHE | Civil Work | 2026-06-30 | 2026-06-30 | 2 | plumbing | 0.6 | 9 t4 SS |
| norm norms-v1:crewByTrade.painting 8 |  | input SKF, Pune Schedule.xlsx · task row 56 (planned WORK DAYS) 20 | 65 | 2026-08-11 | 45 | t56 | 68 | 48 | Internal Walls (Putty + Paint) | A2 | Finishing | 2026-07-23 | 2026-07-23 | 3 | painting | 0.06 | 0 t13 SS, 11 t12 FS |
| norm norms-v1:crewByTrade.carpentry 8 |  | input SKF, Pune Schedule.xlsx · task row 49 (planned WORK DAYS) 3 | 50 | 2026-07-27 | 47 | t49 | 68 | 65 | Acoustical Panels | A2 | Doors & Carpentry | 2026-07-25 | 2026-07-25 | 18 | carpentry | 0.02 | 2 t56 SS |
| norm norms-v1:crewByTrade.painting 8 |  | input SKF, Pune Schedule.xlsx · task row 57 (planned WORK DAYS) 12 | 59 | 2026-08-05 | 47 | t57 | 64 | 52 | Ceiling Painting | A2 | Finishing | 2026-07-25 | 2026-07-25 | 5 | painting | 0.04 | 0 t16 SS, 2 t56 SS |
| norm norms-v1:crewByTrade.modular 6 |  | input SKF, Pune Schedule.xlsx · task row 51 (planned WORK DAYS) 11 | 58 | 2026-08-04 | 47 | t51 | 68 | 57 | Manager/Meeting Room Tables | B2 | Modular Placement | 2026-07-25 | 2026-07-25 | 10 | modular | 0.3 | 0 t57 SS |
| norm norms-v1:crewByTrade.carpentry 8 |  | input SKF, Pune Schedule.xlsx · task row 52 (planned WORK DAYS) 11 | 58 | 2026-08-04 | 47 | t52 | 68 | 57 | Planter Box / OHU / File Storage | A7 | Modular Placement | 2026-07-25 | 2026-07-25 | 10 | carpentry | 1 | 0 t57 SS |
| norm norms-v1:crewByTrade.civil 8 |  | input SKF, Pune Schedule.xlsx · task row 6 (planned WORK DAYS) 6 | 39 | 2026-07-16 | 33 | t6 | 41 | 35 | Waterproofing (Floor + Walls 600mm) | A1 | Civil Work | 2026-07-11 | 2026-07-11 | 2 | civil | 0.15 | 11 t5 SS |
| norm norms-v1:crewByTrade.finishing 6 |  | input SKF, Pune Schedule.xlsx · task row 60 (planned WORK DAYS) 3 | 55 | 2026-08-01 | 52 | t60 | 67 | 64 | Frosting | A5 | Finishing | 2026-07-30 | 2026-07-30 | 12 | finishing | 0.4 | -2 t48 FS |
| norm norms-v1:crewByTrade.finishing 6 |  | input SKF, Pune Schedule.xlsx · task row 61 (planned WORK DAYS) 3 | 55 | 2026-08-01 | 52 | t61 | 64 | 61 | Vinyl Pasting | A5 | Finishing | 2026-07-30 | 2026-07-30 | 9 | finishing | 0.3 | 7 t56 SS |
| norm norms-v1:crewByTrade.finishing 6 |  | input SKF, Pune Schedule.xlsx · task row 62 (planned WORK DAYS) 3 | 55 | 2026-08-01 | 52 | t62 | 60 | 57 | Wallpaper Pasting | A5 | Finishing | 2026-07-30 | 2026-07-30 | 5 | finishing | 0.3 | 7 t56 SS |
| norm norms-v1:crewByTrade.finishing 6 |  | input SKF, Pune Schedule.xlsx · task row 63 (planned WORK DAYS) 2 | 58 | 2026-08-04 | 56 | t63 | 63 | 61 | Logo Installation | A4 | Finishing | 2026-08-03 | 2026-08-03 | 5 | finishing | 0.5 | 1 t62 FS |
| norm norms-v1:crewByTrade.finishing 6 |  | input SKF, Pune Schedule.xlsx · task row 64 (planned WORK DAYS) 2 | 59 | 2026-08-05 | 57 | t64 | 68 | 66 | Rolling Blinds | A6 | Finishing | 2026-08-04 | 2026-08-04 | 9 | finishing | 1 | 2 t61 FS |
| norm norms-v1:crewByTrade.finishing 6 |  | input SKF, Pune Schedule.xlsx · task row 65 (planned WORK DAYS) 2 | 59 | 2026-08-05 | 57 | t65 | 68 | 66 | Planters & Frames | A4 | Finishing | 2026-08-04 | 2026-08-04 | 9 | finishing | 0.2 | 2 t61 FS |
| norm norms-v1:crewByTrade.finishing 6 |  | input SKF, Pune Schedule.xlsx · task row 66 (planned WORK DAYS) 4 | 56 | 2026-08-02 | 52 | t66 | 68 | 64 | Sun Control Film | A5 | Finishing | 2026-07-30 | 2026-07-30 | 12 | finishing | 0.3 | 0 t60 SS |
| norm norms-v1:crewByTrade.finishing 6 |  | input SKF, Pune Schedule.xlsx · task row 67 (planned WORK DAYS) 4 | 63 | 2026-08-09 | 59 | t67 | 68 | 64 | Signage Installation | A4 | Finishing | 2026-08-06 | 2026-08-06 | 5 | finishing | 0.3 | 1 t63 FS |
| norm norms-v1:crewByTrade.civil 8 |  | input SKF, Pune Schedule.xlsx · task row 7 (planned WORK DAYS) 6 | 20 | 2026-06-27 | 14 | t7 | 68 | 62 | Anti-termite & Pest Control | A1 | Civil Work | 2026-06-22 | 2026-06-22 | 48 | civil | 0.05 | 1 t4 SS |
| norm norms-v1:crewByTrade.civil 8 |  | input SKF, Pune Schedule.xlsx · task row 8 (planned WORK DAYS) 4 | 29 | 2026-07-06 | 25 | t8 | 31 | 27 | Self Leveling & Associated Works | A1 | Civil Work | 2026-07-03 | 2026-07-03 | 2 | civil | 0.1 | -8 t6 SS |
| norm norms-v1:crewByTrade.flooring 6 |  | input SKF, Pune Schedule.xlsx · task row 9 (planned WORK DAYS) 4 | 46 | 2026-07-23 | 42 | t9 | 48 | 44 | Vitrified Tile Works | A2 | Civil Work | 2026-07-20 | 2026-07-20 | 2 | flooring | 0.08 | 13 t8 FS |
| norm norms-v1:crewByTrade.civil 8 |  | input SKF, Pune Schedule.xlsx · task row 10 (planned WORK DAYS) 6 | 48 | 2026-07-25 | 42 | t10 | 50 | 44 | POP on Flooring (Protection) | A1 | Civil Work | 2026-07-20 | 2026-07-20 | 2 | civil | 0.15 | 0 t9 SS |
| norm norms-v1:crewByTrade.flooring 6 |  | input SKF, Pune Schedule.xlsx · task row 53 (planned WORK DAYS) 11 | 58 | 2026-08-04 | 47 | t53 | 60 | 49 | Raised Flooring | A2 | Modular Placement | 2026-07-25 | 2026-07-25 | 2 | flooring | 0.03 | -1 t10 FS |
| norm norms-v1:crewByTrade.modular 6 |  | input SKF, Pune Schedule.xlsx · task row 50 (planned WORK DAYS) 12 | 62 | 2026-08-08 | 50 | t50 | 64 | 52 | Modular Workstations | B2 | Modular Placement | 2026-07-28 | 2026-07-28 | 2 | modular | 0.7 | 0 t57 SS, -8 t53 FS |
| norm norms-v1:crewByTrade.modular 6 |  | input SKF, Pune Schedule.xlsx · task row 54 (planned WORK DAYS) 10 | 65 | 2026-08-11 | 55 | t54 | 67 | 57 | WS / Meeting Room Chair Placement | B3 | Modular Placement | 2026-08-02 | 2026-08-02 | 2 | modular | 0.6 | 5 t50 SS |
| norm norms-v1:crewByTrade.modular 6 |  | input SKF, Pune Schedule.xlsx · task row 55 (planned WORK DAYS) 7 | 62 | 2026-08-08 | 55 | t55 | 68 | 61 | Loose Furniture | B3 | Modular Placement | 2026-08-02 | 2026-08-02 | 6 | modular | 0.4 | 5 t50 SS |
| norm norms-v1:crewByTrade.flooring 6 |  | input SKF, Pune Schedule.xlsx · task row 58 (planned WORK DAYS) 5 | 52 | 2026-07-29 | 47 | t58 | 61 | 56 | Carpet Installation | B1 | Finishing | 2026-07-25 | 2026-07-25 | 9 | flooring | 1 | 0 t57 SS, -1 t10 FS |
| norm norms-v1:crewByTrade.finishing 6 |  | input SKF, Pune Schedule.xlsx · task row 59 (planned WORK DAYS) 2 | 46 | 2026-07-23 | 44 | t59 | 68 | 66 | Aluminium Skirting | A2 | Finishing | 2026-07-22 | 2026-07-22 | 22 | finishing | 0.01 | -3 t58 SS |
| norm norms-v1:crewByTrade.cleaning 10 |  | input SKF, Pune Schedule.xlsx · task row 68 (planned WORK DAYS) 12 | 66 | 2026-08-12 | 54 | t68 | 68 | 56 | Deep Cleaning | GSS | Finishing | 2026-08-01 | 2026-08-01 | 2 | cleaning | 0.2 | 0 t58 SS, -1 t54 SS |
| norm norms-v1:crewByTrade.general 4 | True | input SKF, Pune Schedule.xlsx · task row 69 (planned WORK DAYS) 10 | 68 | 2026-08-14 | 58 | t69 | 68 | 58 | Snag List & Handover | GSS | Handover | 2026-08-05 | 2026-08-05 | 0 | general | 0.2 | 0 t68 SS, 0 t34 FS, 0 t38 FS, 3 t25 FS |
